# Motorola Project Planner

How a schedule from MS Project changed from version to version. A marks actual dates.

## Version 1 (saved 2013-05-16)

Note of the change: Added Project Planner

| ID | WBS | Task | Duration | Start | Finish | Predecessors | Complete | Total float | Constraint |
| --- | --- | --- | --- | --- | --- | --- | --- | --- | --- |
| 1 | 1 | **Phase 1 Build** | 40d | 2013-05-01 A | 2013-06-21 |  | 30% | 75d |  |
| 2 | 1.1 | **Read sensor module construction** | 2d | 2013-05-01 A | 2013-05-02 A |  | 100% |  |  |
| 3 |  | Microphone | 0d | 2013-05-01 A | 2013-05-01 A |  | 100% |  |  |
| 4 |  | Vibration | 2d | 2013-05-01 A | 2013-05-02 A |  | 100% |  |  |
| 5 |  | Light | 0d | 2013-05-01 A | 2013-05-01 A |  | 100% |  |  |
| 6 |  | Temperature | 0d | 2013-05-01 A | 2013-05-01 A |  | 100% |  |  |
| 7 | 1.2 | **Implement sensor modules** | 5d | 2013-05-02 A | 2013-05-09 A | 2 | 100% |  |  |
| 8 |  | Microphone | 5d | 2013-05-02 A | 2013-05-09 A | 3 | 100% |  |  |
| 9 |  | Vibration | 5d | 2013-05-03 A | 2013-05-09 A | 4 | 100% |  |  |
| 10 |  | Light | 3d | 2013-05-03 A | 2013-05-07 A | 5 | 100% |  |  |
| 11 |  | Temperature | 3d | 2013-05-03 A | 2013-05-07 A | 6 | 100% |  |  |
| 12 |  | Phase 1 breadboarded | 0d | 2013-05-09 A | 2013-05-09 A | 8, 9, 10, 11 | 100% |  |  |
| 13 |  | Apply suggested revisions | 7d | 2013-05-10 A | 2013-05-16 | 8, 9, 10, 11 | 75% | 0d |  |
| 14 |  | All sensor modules complete | 0d | 2013-05-16 A | 2013-05-16 | 13 | 75% | 0d |  |
| 15 | 1.6 | **Power board module contruction** | 11d | 2013-05-17 | 2013-05-31 | 14 |  | 0d |  |
| 16 |  | Design | 1d | 2013-05-17 | 2013-05-17 |  |  | 0d |  |
| 17 |  | Build | 1d | 2013-05-20 | 2013-05-20 | 16 |  | 0d |  |
| 18 |  | Testing/Validation | 3d | 2013-05-21 | 2013-05-23 | 17 |  | 0d |  |
| 19 |  | Redesign | 2d | 2013-05-24 | 2013-05-27 | 18 |  | 0d |  |
| 20 |  | Build | 1d | 2013-05-28 | 2013-05-28 | 19 |  | 0d |  |
| 21 |  | Testing/Validation | 3d | 2013-05-29 | 2013-05-31 | 20 |  | 0d |  |
| 22 |  | SMPS and rails working | 0d | 2013-05-31 | 2013-05-31 | 21 |  | 0d |  |
| 23 | 1.7 | **Auxiliary board P1 Development** | 22d | 2013-05-17 | 2013-06-17 | 14 |  | 79d |  |
| 24 |  | R1 Layout design | 3d | 2013-05-17 | 2013-05-21 |  |  | 79d |  |
| 25 |  | R1 build | 3d | 2013-05-22 | 2013-05-24 | 24 |  | 79d |  |
| 26 |  | R1 testing/debug | 3d | 2013-05-27 | 2013-05-29 | 25 |  | 79d |  |
| 27 |  | R2 layout design | 3d | 2013-05-30 | 2013-06-03 | 26, 14 |  | 79d |  |
| 28 |  | R2 build | 3d | 2013-06-04 | 2013-06-06 | 27 |  | 79d |  |
| 29 |  | R2 testing/debug | 7d | 2013-06-07 | 2013-06-17 | 28 |  | 79d |  |
| 30 |  | Auxiliary board P1 complete | 0d | 2013-06-17 | 2013-06-17 | 29 |  | 79d |  |
| 31 | 1.8 | **Base Development** | 36d | 2013-05-01 A | 2013-06-17 |  | 40% | 79d |  |
| 32 |  | Design | 0d | 2013-05-01 A | 2013-05-01 A |  | 100% |  |  |
| 33 |  | Assembly | 3d | 2013-05-06 A | 2013-05-08 A |  | 100% |  | start no earlier than 2013-05-06 |
| 34 | 1.8.3 | **Mounting validation** | 17d | 2013-05-15 A | 2013-06-06 | 33 | 38% | 86d |  |
| 35 |  | Weights created | 3d | 2013-05-15 A | 2013-05-17 A |  | 100% |  |  |
| 36 |  | Testing | 14d | 2013-05-20 A | 2013-06-06 | 35 | 25% | 86d |  |
| 37 |  | Interface with electrical hardware | 0d | 2013-05-14 A | 2013-05-14 A | 33 | 100% |  |  |
| 38 |  | Redesign | 2d | 2013-05-09 A | 2013-05-10 A | 37 | 100% |  |  |
| 39 |  | Final assembly | 7d | 2013-06-07 | 2013-06-17 | 38, 28 |  | 79d |  |
| 40 |  | All our phase 1 base are belong to us | 0d | 2013-06-17 | 2013-06-17 | 39 |  | 79d |  |
| 41 |  | All phase 1 electr/mech hardware complete | 0d | 2013-06-17 | 2013-06-17 | 39 |  | 79d |  |
| 42 | 1.10 | **Firmware Build 1 - Raw Data** | 37d | 2013-05-06 A | 2013-06-21 |  | 22% | 75d |  |
| 43 | 1.10.1 | **Signal Processing** | 29d | 2013-05-10 A | 2013-06-17 |  | 9% | 79d |  |
| 44 | 1.10.1.1 | **Continuous Readings** | 13d | 2013-05-12 A | 2013-05-28 |  | 60% | 79d |  |
| 45 |  | Collect mic/vib data | 7d | 2013-05-12 A | 2013-05-20 |  | 50% | 84d |  |
| 46 |  | Verification of mic/vib data | 2d | 2013-05-21 A | 2013-05-22 | 45 | 50% | 83d |  |
| 47 |  | FFT/FHT processing + analysis | 3d | 2013-05-23 A | 2013-05-27 A | 46 | 100% |  |  |
| 48 |  | Identify ideal corner frequencies | 1d | 2013-05-28 A | 2013-05-28 | 47 | 25% | 79d |  |
| 49 | 1.10.1.2 | **Discrete Readings** | 10d | 2013-05-12 A | 2013-05-23 |  | 14% | 82d |  |
| 50 |  | Data collection | 3d | 2013-05-12 A | 2013-05-14 A |  | 100% |  |  |
| 51 | 1.10.1.2.2 | **Analysis of raw data** | 6d | 2013-05-15 | 2013-05-22 | 50 |  |  |  |
| 52 |  | Thermistor | 6d | 2013-05-15 | 2013-05-22 |  |  | 0d |  |
| 53 |  | Photoresistor | 6d | 2013-05-15 | 2013-05-22 |  |  | 0d |  |
| 54 |  | Development of averaging algorithm | 7d | 2013-05-15 | 2013-05-23 | 50 |  | 82d |  |
| 55 |  | Implementation of averaging algorithm | 0d | 2013-05-23 | 2013-05-23 | 54 |  | 82d |  |
| 56 |  | Data Logging | 10d | 2013-05-10 | 2013-05-21 | 12 |  | 98d |  |
| 57 | 1.10.1.4 | **Identify tolerances** | 14d | 2013-05-29 | 2013-06-17 | 44, 49 |  | 79d |  |
| 58 |  | Washing Machine | 14d | 2013-05-29 | 2013-06-17 |  |  | 79d |  |
| 59 |  | Dryer | 14d | 2013-05-29 | 2013-06-17 |  |  | 79d |  |
| 60 |  | Garage Door | 14d | 2013-05-29 | 2013-06-17 |  |  | 79d |  |
| 61 |  | TV | 14d | 2013-05-29 | 2013-06-17 |  |  | 79d |  |
| 62 |  | Sump Pump | 14d | 2013-05-29 | 2013-06-17 |  |  | 79d |  |
| 63 | 1.10.2 | **Memory** | 37d | 2013-05-06 A | 2013-06-21 |  | 25% |  |  |
| 64 |  | Initial memory manipulation | 7d | 2013-05-06 A | 2013-05-12 A |  | 100% |  |  |
| 65 |  | Storage of router information | 7d | 2013-05-13 A | 2013-05-21 | 64 | 25% | 2d |  |
| 66 |  | Read IC + sent through WiFi | 7d | 2013-05-22 | 2013-05-30 | 65 |  | 2d |  |
| 67 |  | EEPROM manipulation | 7d | 2013-05-31 | 2013-06-10 | 66 |  | 2d |  |
| 68 |  | Storage of complete JSON message | 7d | 2013-06-11 | 2013-06-19 | 67 |  | 2d |  |
| 69 | 1.10.3 | **User Interface Build 1** | 14d | 2013-05-06 A | 2013-05-21 |  | 66% | 98d |  |
| 70 |  | GUI development | 7d | 2013-05-06 A | 2013-05-12 A |  | 100% |  |  |

| ID | WBS | Task | Duration | Start | Finish | Predecessors | Complete | Total float | Constraint |
| --- | --- | --- | --- | --- | --- | --- | --- | --- | --- |
| 71 |  | Data Logging | 0d | 2013-05-21 | 2013-05-21 | 56 |  | 98d |  |
| 72 |  | Sensor Implementation | 7d | 2013-05-13 A | 2013-05-21 | 70 | 32% | 98d |  |
| 73 |  | User interface complete | 0d | 2013-05-21 | 2013-05-21 | 70, 72, 71 |  | 98d |  |
| 74 | 1.10.4 | **WiFi** | 21d | 2013-05-06 A | 2013-05-30 |  | 51% | 52d |  |
| 75 |  | Define structure of message | 7d | 2013-05-06 A | 2013-05-12 A |  | 100% |  |  |
| 76 |  | Identify device ID scheme | 3d | 2013-05-16 | 2013-05-20 |  |  | 60d | start no earlier than 2013-05-16 |
| 77 |  | Sensor data transmission | 7d | 2013-05-13 A | 2013-05-21 | 75 | 75% | 52d |  |
| 78 |  | Handshake implementation | 7d | 2013-05-22 | 2013-05-30 | 77 |  | 52d |  |
| 79 |  | Mic/Piezo/Light/Temp displayed | 0d | 2013-05-30 | 2013-05-30 | 78 |  | 52d |  |
| 80 | 1.11 | **Demonstration** | 16.25d | 2013-05-10 A | 2013-05-30 |  | 53% | 91.75d |  |
| 81 |  | Demo intent | 3d | 2013-05-13 A | 2013-05-15 A |  | 100% |  | start no earlier than 2013-05-13 |
| 82 |  | Server preparation | 7d | 2013-05-16 A | 2013-05-24 | 81 | 75% | 95d |  |
| 83 |  | Hardware preparation | 7d | 2013-05-16 A | 2013-05-24 | 81 | 75% | 95d |  |
| 84 |  | Firmware developme nt | 10d | 2013-05-10 A | 2013-05-30 | 12 | 8% | 67.75d |  |
| 85 |  | Demonstration | 0d | 2013-05-30 | 2013-05-30 | 82, 83, 84 |  | 91.75d |  |
| 87 | 2 | **Phase 2 Build** | 115d? | 2013-05-01 A | 2013-10-04 |  | 4% | 0d |  |
| 88 | 2.1 | **Wake sensor module construction** | 7d | 2013-05-17 A | 2013-05-27 | 14 | 54% | 72d |  |
| 89 |  | Microphone wake | 7d | 2013-05-17 A | 2013-05-27 |  | 75% | 70d |  |
| 90 |  | Piezo wake | 7d | 2013-05-17 A | 2013-05-27 |  | 25% | 70d |  |
| 91 |  | Photo wake | 3d | 2013-05-17 A | 2013-05-21 |  | 50% | 76d |  |
| 92 |  | Water wake | 3d | 2013-05-17 A | 2013-05-21 |  | 75% | 76d |  |
| 93 | 2.2 | **Wake sensor module implementation** | 10d | 2013-05-30 | 2013-06-13 | 84 |  | 67.75d |  |
| 94 |  | Microphone wake | 3d | 2013-05-30 | 2013-06-04 | 89 |  | 67.75d | start no earlier than 2013-05-30 |
| 95 |  | Piezo wake | 3d | 2013-05-30 | 2013-06-04 | 90 |  | 67.75d |  |
| 96 |  | Photo wake | 1d | 2013-05-30 | 2013-05-31 | 91 |  | 69.75d |  |
| 97 |  | Water wake | 1d | 2013-05-30 | 2013-05-31 | 92 |  | 69.75d |  |
| 98 |  | Phase 2 breadboarded | 0d | 2013-06-04 | 2013-06-04 | 94, 95, 96, 97 |  | 67.75d |  |
| 99 |  | Apply suggested revisions | 7d | 2013-06-04 | 2013-06-13 | 98 |  | 67.75d |  |
| 100 |  | All modules complete | 0d | 2013-06-13 | 2013-06-13 | 99 |  | 67.75d |  |
| 101 | 2.3 | **Housing design** | 70d | 2013-05-17 A | 2013-08-22 |  | 6% | 31d |  |
| 102 |  | Concept approval | 0d | 2013-05-17 A | 2013-05-17 |  | 50% | 36.25d | start no earlier than 2013-05-17 |
| 103 |  | Detailed design | 3d | 2013-05-17 A | 2013-05-21 | 102 | 75% | 34d |  |
| 104 |  | Internal design review | 2d | 2013-05-22 | 2013-05-23 | 103 |  | 34d |  |
| 105 |  | Team design approval | 0d | 2013-05-23 | 2013-05-23 | 104 |  | 34d |  |
| 106 |  | Initial prototype | 3d | 2013-05-24 | 2013-05-28 | 105 |  | 34d |  |
| 107 |  | Internal hardware fitting | 0d | 2013-07-15 | 2013-07-15 | 106, 157 |  | 0d |  |
| 108 |  | Redesign | 5d | 2013-07-16 | 2013-07-22 | 107 |  | 0d |  |
| 109 |  | Team design approval | 0d | 2013-07-22 | 2013-07-22 | 108 |  | 0d |  |
| 110 |  | Internal hardware fitting | 2d | 2013-07-23 | 2013-07-24 | 109 |  | 0d |  |
| 111 |  | Housing design complete | 0d | 2013-07-24 | 2013-07-24 | 110 |  | 0d |  |
| 112 |  | Manufacturing of 1 complete housing | 3d | 2013-07-25 | 2013-07-29 | 111 |  | 0d |  |
| 113 |  | Manufacturing of 10 complete housing sets | 21d | 2013-07-25 | 2013-08-22 | 111 |  | 31d |  |
| 114 |  | Hardware build complete | 0d | 2013-08-22 | 2013-08-22 | 113 |  | 31d |  |
| 115 | 2.4 | **State detection** | 35d | 2013-07-30 | 2013-09-16 |  |  | 0d |  |
| 116 | 2.4.1 | **Data collection** | 7d | 2013-07-30 | 2013-08-07 | 112 |  | 0d |  |
| 117 |  | Washing Machine | 7d | 2013-07-30 | 2013-08-07 |  |  | 0d |  |
| 118 |  | Dryer | 7d | 2013-07-30 | 2013-08-07 |  |  | 0d |  |
| 119 |  | Garage Door | 7d | 2013-07-30 | 2013-08-07 |  |  | 0d |  |
| 120 |  | TV | 7d | 2013-07-30 | 2013-08-07 |  |  | 0d |  |
| 121 |  | Sump Pump | 7d | 2013-07-30 | 2013-08-07 |  |  | 0d |  |
| 122 |  | Definition of tolerances | 3d | 2013-08-08 | 2013-08-12 | 117, 118, 119, 120, 121 |  | 25d |  |
| 123 | 2.4.3 | **Definition of states** | 7d | 2013-08-08 | 2013-08-16 | 157 |  | 0d |  |
| 124 |  | Washing Machine | 7d | 2013-08-08 | 2013-08-16 | 117 |  | 0d |  |
| 125 |  | Dryer | 7d | 2013-08-08 | 2013-08-16 | 118 |  | 0d |  |
| 126 |  | Garage Door | 7d | 2013-08-08 | 2013-08-16 | 119 |  | 0d |  |
| 127 |  | TV | 7d | 2013-08-08 | 2013-08-16 | 120 |  | 0d |  |
| 128 |  | Sump Pump | 7d | 2013-08-08 | 2013-08-16 | 121 |  | 0d |  |
| 129 |  | Detection algorithm development | 7d | 2013-08-19 | 2013-08-27 | 124, 125, 126, 127, 128 |  | 0d |  |
| 130 |  | Testing/Validation | 7d | 2013-08-28 | 2013-09-05 | 129 |  | 0d |  |
| 131 |  | Error/Overlap handling | 7d | 2013-09-06 | 2013-09-16 | 130 |  | 0d |  |
| 132 |  | State detection complete | 0d | 2013-09-16 | 2013-09-16 | 131 |  | 0d |  |
| 133 | 2.5 | **Power supply module construction** | 3d | 2013-05-10 | 2013-05-12 | 12 |  | 14d |  |
| 134 |  | SMPS | 3d | 2013-05-10 | 2013-05-12 |  |  | 14d |  |
| 135 |  | 5V Rail Enable | 3d | 2013-05-10 | 2013-05-12 |  |  | 14d |  |
| 136 |  | 3.3V Rail Enable | 3d | 2013-05-10 | 2013-05-12 |  |  | 14d |  |
| 137 | 2.6 | **Power supply module testing** | 11d? | 2013-05-13 | 2013-05-27 | 133 |  | 14d |  |
| 138 |  | Oscilloscope (loaded) | 1d | 2013-05-13 | 2013-05-13 |  |  | 14d |  |
| 139 |  | Teensy++ | 3d | 2013-05-14 | 2013-05-16 | 138 |  | 14d |  |
| 140 |  | Teensy++ and 3.3V sensors | 1d? | 2013-05-13 | 2013-05-13 |  |  | 104d |  |
| 141 |  | Teensy++ and WiFly | 7d | 2013-05-17 | 2013-05-27 | 139 |  | 14d |  |

| ID | WBS | Task | Duration | Start | Finish | Predecessors | Total float |
| --- | --- | --- | --- | --- | --- | --- | --- |
| 142 |  | All power sources functional | 0d | 2013-05-27 | 2013-05-27 | 138, 139, 141 | 14d |
| 143 | 2.7 | **USB development** | 10d | 2013-05-31 | 2013-06-14 | 22 | 0d |
| 144 |  | USB module construction | 2d | 2013-06-03 | 2013-06-04 |  | 88d |
| 145 | 2.7.2 | **USB module testing** | 7d | 2013-05-31 | 2013-06-11 |  | 10d |
| 146 |  | Interface with Teensy++ | 1d | 2013-06-03 | 2013-06-03 |  | 89d |
| 147 |  | Redesign | 7d | 2013-06-03 | 2013-06-11 |  | 83d |
| 148 |  | Successful data transmission | 3d | 2013-06-03 | 2013-06-05 |  | 84d |
| 149 |  | USB module functional | 0d | 2013-05-31 | 2013-05-31 |  | 10d |
| 150 |  | USB/SMPS Interface module construction | 3d | 2013-06-06 | 2013-06-10 | 148 | 84d |
| 151 |  | USB/SMPS Interface module testing | 3d | 2013-06-03 | 2013-06-05 |  | 0d |
| 152 |  | Redesign | 7d | 2013-06-06 | 2013-06-14 | 151 | 0d |
| 153 |  | USB/SMPS Interface module functional | 0d | 2013-06-14 | 2013-06-14 | 152 | 0d |
| 154 |  | All modules functional | 0d | 2013-06-14 | 2013-06-14 | 142, 149, 153 | 0d |
| 155 | 2.9 | **Auxiliary board P2 Development** | 31d | 2013-06-14 | 2013-07-29 |  | 0d |
| 156 |  | R1 Layout design | 0d | 2013-06-14 | 2013-06-14 | 154 | 0d |
| 157 |  | R1 build | 2d | 2013-06-17 | 2013-07-15 | 156 | 0d |
| 158 |  | R1 testing/debug | 3d | 2013-07-16 | 2013-07-18 | 157 | 35d |
| 159 |  | R2 layout design | 2d | 2013-07-19 | 2013-07-22 | 158 | 35d |
| 160 |  | R2 build | 2d | 2013-07-23 | 2013-07-24 | 159 | 35d |
| 161 |  | R2 testing/debug | 3d | 2013-07-25 | 2013-07-29 | 160 | 35d |
| 162 |  | Auxiliary board P2 complete | 0d | 2013-07-29 | 2013-07-29 | 161 | 35d |
| 163 | 2.10 | **Power Management** | 7d? | 2013-05-01 | 2013-05-09 |  | 108d |
| 164 |  | Power-down mode | 1d? | 2013-05-01 | 2013-05-01 |  | 114d |
| 165 |  | Watchdog | 1d? | 2013-05-01 | 2013-05-01 |  | 114d |
| 166 |  | Switch used to wake from power-down | 3d | 2013-05-01 | 2013-05-03 |  | 112d |
| 167 |  | All wake modules used to wake from power-down | 7d | 2013-05-01 | 2013-05-09 |  | 108d |
| 168 | 2.10.5 | **Current consumptoin DOE** | 1d? | 2013-05-01 | 2013-05-01 |  | 114d |
| 169 |  | (in-depth, includes time on/off using watchdog) | 1d? | 2013-05-01 | 2013-05-01 |  | 114d |
| 170 | 2.11 | **WiFi** | 25d | 2013-05-31 | 2013-07-04 | 74 | 52d |
| 171 |  | Status/Heartbeat message | 7d | 2013-05-31 | 2013-06-10 |  | 52d |
| 172 |  | Receive state/apply new configuration | 7d | 2013-06-11 | 2013-06-19 | 171 | 52d |
| 173 |  | Transmission of state change | 3d | 2013-06-20 | 2013-06-24 | 172 | 52d |
| 174 |  | Acknowledgement | 1d | 2013-06-25 | 2013-06-25 | 173 | 52d |
| 175 |  | Define error-handling algorithm | 7d | 2013-06-26 | 2013-07-04 | 174 | 52d |
| 176 |  | WiFi communication algorithm complete | 0d | 2013-07-04 | 2013-07-04 | 175 | 52d |
| 177 |  | State machine | 7d | 2013-09-17 | 2013-09-25 | 93, 115, 155, 170 | 0d |
| 178 | 2.13 | **User Interface Build 2** | 7d | 2013-05-01 | 2013-05-09 |  | 101d |
| 179 |  | GUI development | 7d | 2013-05-01 | 2013-05-09 |  | 101d |
| 180 |  | User interface complete | 0d | 2013-05-09 | 2013-05-09 | 179 | 101d |
| 181 |  | Project complete | 0d | 2013-09-25 | 2013-09-25 | 177 | 0d |
| 182 | 2.15 | **Demonstration** | 108d | 2013-05-10 | 2013-10-04 | 178 | 0d |
| 183 |  | Demo intent | 3d | 2013-05-10 | 2013-05-12 |  | 105d |
| 184 |  | Material acquisition | 7d | 2013-05-10 | 2013-05-16 |  | 101d |
| 185 |  | Video collection | 7d | 2013-09-26 | 2013-10-04 | 181 | 0d |
| 186 |  | Demonstration | 0d | 2013-09-25 | 2013-09-25 | 184, 183, 181 | 7d |

## Version 2 (saved 2013-05-20)

Note of the change: Updated Gantt Chart

Last finish 2013-10-04 → 2013-10-11 (+7d). Complete tasks 20 → 27.

Changed:

| ID | Task | Start | Finish | Duration | Complete | Total float | Predecessors | Other |
| --- | --- | --- | --- | --- | --- | --- | --- | --- |
| 1 | **Phase 1 Build** |  |  |  | 30% → 42% | 75d → 80d |  |  |
| 15 | **Power board module contruction** | 2013-05-17 A | 2013-05-31 → 2013-06-07 (+7d) | 11d → 16d | 0% → 32% | 0d → 90d |  |  |
| 16 | Design | 2013-05-17 A | 2013-05-17 A |  | 0% → 100% | 0d → none |  |  |
| 17 | Build | 2013-05-20 A | 2013-05-20 A |  | 0% → 100% | 0d → none |  |  |
| 18 | Testing/Validation | 2013-05-21 A |  |  | 0% → 50% | 0d → 101d |  |  |
| 19 | Redesign | 2013-05-24 → 2013-05-31 (+7d) | 2013-05-27 → 2013-06-03 (+7d) |  |  |  | 18 → none | constraint none → start no earlier than 2013-05-31 |
| 20 | Build | 2013-05-28 → 2013-06-04 (+7d) | 2013-05-28 → 2013-06-04 (+7d) |  |  |  |  |  |
| 21 | Testing/Validation | 2013-05-29 → 2013-06-05 (+7d) | 2013-05-31 → 2013-06-07 (+7d) |  |  |  |  |  |
| 22 | SMPS and rails working | 2013-05-31 → 2013-06-07 (+7d) | 2013-05-31 → 2013-06-07 (+7d) |  |  |  |  |  |
| 23 | **Auxiliary board P1 Development** | 2013-05-17 A |  |  | 0% → 20% | 79d → 84d |  |  |
| 24 | R1 Layout design | 2013-05-17 A | 2013-05-21 → 2013-05-17 A (-4d) | 3d → 1d | 0% → 100% | 79d → none |  |  |
| 25 | R1 build | 2013-05-22 → 2013-05-20 A (-2d) | 2013-05-24 → 2013-05-22 (-2d) |  | 0% → 50% | 79d → 87.5d |  |  |
| 26 | R1 testing/debug | 2013-05-27 A |  |  | 0% → 50% | 79d → 84d |  |  |
| 40 | All bases manufactured |  |  |  |  | 79d → 84d |  | was named All our phase 1 base are belong to us |
| 42 | **Firmware Build 1 - Raw Data** |  |  |  | 22% → 35% | 75d → 80d |  |  |
| 43 | **Signal Processing** |  |  |  | 9% → 28% | 79d → 84d |  |  |
| 44 | **Continuous Readings** |  |  |  | 60% → 56% | 79d → 84d |  |  |
| 46 | Verification of mic/vib data |  |  |  | 50% → 25% | 83d → 88d |  |  |
| 49 | **Discrete Readings** |  |  |  | 14% → 69% | 82d → 87d |  |  |
| 51 | **Analysis of raw data** | 2013-05-15 A |  |  | 0% → 88% |  |  |  |
| 52 | Thermistor | 2013-05-15 A | 2013-05-22 A |  | 0% → 100% | 0d → none |  |  |
| 53 | Photoresistor | 2013-05-15 A |  |  | 0% → 75% |  |  |  |
| 54 | Development of averaging algorithm | 2013-05-15 A |  |  | 0% → 25% | 82d → 87d |  |  |
| 56 | Data Logging | 2013-05-10 A | 2013-05-21 A |  | 0% → 100% | 98d → none |  |  |
| 63 | **Memory** |  |  |  | 25% → 30% |  |  |  |
| 65 | Storage of router information |  |  |  | 25% → 50% |  |  |  |
| 69 | **User Interface Build 1** |  | 2013-05-21 → 2013-05-30 (+9d) | 14d → 21d | 66% → 50% | 98d → 96d |  |  |
| 71 | Data Logging | 2013-05-21 A | 2013-05-21 A |  | 0% → 100% | 98d → none |  |  |
| 72 | Sensor Implementation |  | 2013-05-21 → 2013-05-30 (+9d) | 7d → 14d | 32% → 25% | 98d → 96d |  |  |
| 73 | User interface complete | 2013-05-21 → 2013-05-30 (+9d) | 2013-05-21 → 2013-05-30 (+9d) |  |  | 98d → 96d |  |  |
| 74 | **WiFi** |  |  |  | 51% → 64% | 52d → 57d |  |  |
| 76 | Identify device ID scheme | 2013-05-16 A | 2013-05-20 A |  | 0% → 100% | 60d → none |  |  |
| 79 | All sensor data displayed on cloud server |  |  |  |  | 52d → 57d |  | was named Mic/Piezo/Light/Temp displayed |
| 80 | **Demonstration** |  |  |  | 53% → 69% | 91.75d → 96.75d |  |  |
| 84 | Firmware developme nt |  |  |  | 8% → 50% | 67.75d → 72.75d |  |  |
| 87 | **Phase 2 Build** |  | 2013-10-04 → 2013-10-11 (+7d) | 115d? → 120d? |  |  |  |  |
| 101 | **Housing design** |  | 2013-08-22 → 2013-08-29 (+7d) | 70d → 75d |  |  |  |  |
| 107 | Internal hardware fitting | 2013-07-15 → 2013-07-22 (+7d) | 2013-07-15 → 2013-07-22 (+7d) |  |  |  |  |  |
| 108 | Redesign | 2013-07-16 → 2013-07-23 (+7d) | 2013-07-22 → 2013-07-29 (+7d) |  |  |  |  |  |
| 109 | Team design approval | 2013-07-22 → 2013-07-29 (+7d) | 2013-07-22 → 2013-07-29 (+7d) |  |  |  |  |  |
| 110 | Internal hardware fitting | 2013-07-23 → 2013-07-30 (+7d) | 2013-07-24 → 2013-07-31 (+7d) |  |  |  |  |  |
| 111 | Housing design complete | 2013-07-24 → 2013-07-31 (+7d) | 2013-07-24 → 2013-07-31 (+7d) |  |  |  |  |  |
| 112 | Manufacturing of 1 complete housing | 2013-07-25 → 2013-08-01 (+7d) | 2013-07-29 → 2013-08-05 (+7d) |  |  |  |  |  |
| 113 | Manufacturing of 10 complete housing sets | 2013-07-25 → 2013-08-01 (+7d) | 2013-08-22 → 2013-08-29 (+7d) |  |  |  |  |  |
| 114 | Hardware build complete | 2013-08-22 → 2013-08-29 (+7d) | 2013-08-22 → 2013-08-29 (+7d) |  |  |  |  |  |
| 115 | **State detection** | 2013-07-30 → 2013-08-06 (+7d) | 2013-09-16 → 2013-09-23 (+7d) |  |  |  |  |  |
| 116 | **Data collection** | 2013-07-30 → 2013-08-06 (+7d) | 2013-08-07 → 2013-08-14 (+7d) |  |  |  |  |  |
| 117 | Washing Machine | 2013-07-30 → 2013-08-06 (+7d) | 2013-08-07 → 2013-08-14 (+7d) |  |  |  |  |  |
| 118 | Dryer | 2013-07-30 → 2013-08-06 (+7d) | 2013-08-07 → 2013-08-14 (+7d) |  |  |  |  |  |
| 119 | Garage Door | 2013-07-30 → 2013-08-06 (+7d) | 2013-08-07 → 2013-08-14 (+7d) |  |  |  |  |  |
| 120 | TV | 2013-07-30 → 2013-08-06 (+7d) | 2013-08-07 → 2013-08-14 (+7d) |  |  |  |  |  |
| 121 | Sump Pump | 2013-07-30 → 2013-08-06 (+7d) | 2013-08-07 → 2013-08-14 (+7d) |  |  |  |  |  |
| 122 | Definition of tolerances | 2013-08-08 → 2013-08-15 (+7d) | 2013-08-12 → 2013-08-19 (+7d) |  |  |  |  |  |
| 123 | **Definition of states** | 2013-08-08 → 2013-08-15 (+7d) | 2013-08-16 → 2013-08-23 (+7d) |  |  |  |  |  |
| 124 | Washing Machine | 2013-08-08 → 2013-08-15 (+7d) | 2013-08-16 → 2013-08-23 (+7d) |  |  |  |  |  |
| 125 | Dryer | 2013-08-08 → 2013-08-15 (+7d) | 2013-08-16 → 2013-08-23 (+7d) |  |  |  |  |  |
| 126 | Garage Door | 2013-08-08 → 2013-08-15 (+7d) | 2013-08-16 → 2013-08-23 (+7d) |  |  |  |  |  |
| 127 | TV | 2013-08-08 → 2013-08-15 (+7d) | 2013-08-16 → 2013-08-23 (+7d) |  |  |  |  |  |
| 128 | Sump Pump | 2013-08-08 → 2013-08-15 (+7d) | 2013-08-16 → 2013-08-23 (+7d) |  |  |  |  |  |
| 129 | Detection algorithm development | 2013-08-19 → 2013-08-26 (+7d) | 2013-08-27 → 2013-09-03 (+7d) |  |  |  |  |  |
| 130 | Testing/Validation | 2013-08-28 → 2013-09-04 (+7d) | 2013-09-05 → 2013-09-12 (+7d) |  |  |  |  |  |
| 131 | Error/Overlap handling | 2013-09-06 → 2013-09-13 (+7d) | 2013-09-16 → 2013-09-23 (+7d) |  |  |  |  |  |
| 132 | State detection complete | 2013-09-16 → 2013-09-23 (+7d) | 2013-09-16 → 2013-09-23 (+7d) |  |  |  |  |  |
| 143 | **USB development** | 2013-05-31 → 2013-06-07 (+7d) | 2013-06-14 → 2013-06-21 (+7d) |  |  |  |  |  |
| 144 | USB module construction | 2013-06-03 → 2013-06-10 (+7d) | 2013-06-04 → 2013-06-11 (+7d) |  |  |  |  |  |
| 145 | **USB module testing** | 2013-05-31 → 2013-06-07 (+7d) | 2013-06-11 → 2013-06-18 (+7d) |  |  |  |  |  |
| 146 | Interface with Teensy++ | 2013-06-03 → 2013-06-10 (+7d) | 2013-06-03 → 2013-06-10 (+7d) |  |  |  |  |  |
| 147 | Redesign | 2013-06-03 → 2013-06-10 (+7d) | 2013-06-11 → 2013-06-18 (+7d) |  |  |  |  |  |
| 148 | Successful data transmission | 2013-06-03 → 2013-06-10 (+7d) | 2013-06-05 → 2013-06-12 (+7d) |  |  |  |  |  |
| 149 | USB module functional | 2013-05-31 → 2013-06-07 (+7d) | 2013-05-31 → 2013-06-07 (+7d) |  |  |  |  |  |

| ID | Task | Start | Finish | Duration |
| --- | --- | --- | --- | --- |
| 150 | USB/SMPS Interface module construction | 2013-06-06 → 2013-06-13 (+7d) | 2013-06-10 → 2013-06-17 (+7d) |  |
| 151 | USB/SMPS Interface module testing | 2013-06-03 → 2013-06-10 (+7d) | 2013-06-05 → 2013-06-12 (+7d) |  |
| 152 | Redesign | 2013-06-06 → 2013-06-13 (+7d) | 2013-06-14 → 2013-06-21 (+7d) |  |
| 153 | USB/SMPS Interface module functional | 2013-06-14 → 2013-06-21 (+7d) | 2013-06-14 → 2013-06-21 (+7d) |  |
| 154 | All modules functional | 2013-06-14 → 2013-06-21 (+7d) | 2013-06-14 → 2013-06-21 (+7d) |  |
| 155 | **Auxiliary board P2 Development** | 2013-06-14 → 2013-06-21 (+7d) | 2013-07-29 → 2013-08-05 (+7d) |  |
| 156 | R1 Layout design | 2013-06-14 → 2013-06-21 (+7d) | 2013-06-14 → 2013-06-21 (+7d) |  |
| 157 | R1 build | 2013-06-17 → 2013-06-24 (+7d) | 2013-07-15 → 2013-07-22 (+7d) |  |
| 158 | R1 testing/debug | 2013-07-16 → 2013-07-23 (+7d) | 2013-07-18 → 2013-07-25 (+7d) |  |
| 159 | R2 layout design | 2013-07-19 → 2013-07-26 (+7d) | 2013-07-22 → 2013-07-29 (+7d) |  |
| 160 | R2 build | 2013-07-23 → 2013-07-30 (+7d) | 2013-07-24 → 2013-07-31 (+7d) |  |
| 161 | R2 testing/debug | 2013-07-25 → 2013-08-01 (+7d) | 2013-07-29 → 2013-08-05 (+7d) |  |
| 162 | Auxiliary board P2 complete | 2013-07-29 → 2013-08-05 (+7d) | 2013-07-29 → 2013-08-05 (+7d) |  |
| 177 | State machine | 2013-09-17 → 2013-09-24 (+7d) | 2013-09-25 → 2013-10-02 (+7d) |  |
| 181 | Project complete | 2013-09-25 → 2013-10-02 (+7d) | 2013-09-25 → 2013-10-02 (+7d) |  |
| 182 | **Demonstration** |  | 2013-10-04 → 2013-10-11 (+7d) | 108d → 113d |
| 185 | Video collection | 2013-09-26 → 2013-10-03 (+7d) | 2013-10-04 → 2013-10-11 (+7d) |  |
| 186 | Demonstration | 2013-09-25 → 2013-10-02 (+7d) | 2013-09-25 → 2013-10-02 (+7d) |  |

## Version 3 (saved 2013-05-23)

Note of the change: Updated progress in Memory Section to show 100% on storing router info

Last finish stays 2013-10-11. Complete tasks 27 → 28.

Changed:

| ID | Task | Start | Finish | Complete | Total float |
| --- | --- | --- | --- | --- | --- |
| 1 | **Phase 1 Build** |  |  | 42% → 44% |  |
| 42 | **Firmware Build 1 - Raw Data** |  |  | 35% → 38% |  |
| 63 | **Memory** |  |  | 30% → 45% |  |
| 65 | Storage of router information |  | 2013-05-21 A | 50% → 100% | 2d → none |
| 66 | Read IC + sent through WiFi | 2013-05-22 A |  | 0% → 25% |  |
